# ESB_Plan

Schedule from MS Project, 2012-09-24 to 2013-02-28.
Seatech

## Calendars

- Standard: Mon-Sat 08:00-12:00, 13:00-17:00; Sun off.

## Resources

| Resource |
| --- |
| Phong |
| TA |
| Xuyên |
| Tuấn Anh |
| Kiên |
| Thịnh |
| Xuyen |

## Schedule

| ID | WBS | Task | Duration | Start | Finish | Predecessors | Total slack | Free slack | Resources | Work |
| --- | --- | --- | --- | --- | --- | --- | --- | --- | --- | --- |
| 1 | 1 | **Khởi động dự án** | 5d | 2012-09-24 | 2012-09-28 |  | 0d |  |  |  |
| 2 | 1.1 | Xây dựng kế hoạch dự án | 3d | 2012-09-24 | 2012-09-26 |  | 0d |  |  |  |
| 3 | 1.2 | Phê duyệt kế hoạch dự án | 2d | 2012-09-27 | 2012-09-28 | 2 | 0d |  |  |  |
| 4 | 2 | **Khảo sát và phân tích yêu cầu** | 22d | 2012-09-29 | 2012-10-24 | 1 | 109d |  | Phong; TA; Xuyên | 528h |
| 5 | 2.1 | Khảo sát và phân tích yêu cầu | 13d | 2012-09-29 | 2012-10-13 |  | 132d | 0d |  |  |
| 6 | 2.2 | Xây dựng tài liệu yêu cầu | 13d | 2012-09-29 | 2012-10-13 |  | 132d | 0d |  |  |
| 7 | 2.3 | Phê duyệt tài liệu | 2d | 2012-10-15 | 2012-10-16 | 6, 5 | 116d |  |  |  |
| 8 | 2.4 | Yêu cầu phục vụ sizing | 10d | 2012-10-13 | 2012-10-24 | 15 | 109d |  |  |  |
| 9 | 3 | **Thiết kế** | 30d | 2012-09-29 | 2012-11-02 | 1 | 0d |  | Tuấn Anh; Kiên | 480h |
| 10 | 3.1 | Thiết kế tổng thể (kiến trúc) | 10d | 2012-09-29 | 2012-10-10 | 2 | 0d |  |  |  |
| 11 | 3.2 | Xây dựng tài liệu thiết kế tổng thể | 10d | 2012-09-29 | 2012-10-10 |  | 0d |  |  |  |
| 12 | 3.3 | Phê duyệt thiết kế tổng thể | 2d | 2012-10-11 | 2012-10-12 | 11, 10 | 0d |  |  |  |
| 13 | 3.4 | Thiết kế chi tiết các chuẩn kết nối | 10d | 2012-09-29 | 2012-10-10 | 2 | 0d |  |  |  |
| 14 | 3.5 | Xây dựng tài liệu tiết kế chuẩn kết nối | 10d | 2012-09-29 | 2012-10-10 | 2 | 0d |  |  |  |
| 15 | 3.6 | Phê duyệt thiết kế các chuẩn kết nối | 2d | 2012-10-11 | 2012-10-12 | 14, 13 | 0d |  |  |  |
| 16 | 3.7 | Thiết kế chi tiết các kết nối | 15d | 2012-10-13 | 2012-10-30 | 15, 12 | 104d |  |  |  |
| 17 | 3.8 | Xây dựng tài liệu thiết kế chi tiết các kết nối | 15d | 2012-10-13 | 2012-10-30 | 15, 12 | 0d |  |  |  |
| 18 | 3.9 | Phê duyệt thiết kế chi tiết các kết nối | 3d | 2012-10-31 | 2012-11-02 | 17 | 0d |  |  |  |
| 19 | 3.10 | Thiết kế phần cứng: sizing, high availability | 15d | 2012-10-13 | 2012-10-30 | 15 | 104d |  |  |  |
| 20 | 3.11 | Xây dựng tài liệu thiết kế mô hình triển khai | 15d | 2012-10-13 | 2012-10-30 | 15 | 101d | 0d |  |  |
| 21 | 3.12 | Phê duyệt thiết kế mô hình triển khai | 3d | 2012-10-31 | 2012-11-02 | 20 | 101d |  |  |  |
| 22 | 4 | **Lập trình** | 58d | 2012-10-13 | 2012-12-19 |  | 18d |  | Kiên; TA; Thịnh | 1392h |
| 23 | 4.1 | Lập trình các thành phần chung của các chuẩn | 10d | 2012-10-13 | 2012-10-24 | 15 | 109d |  |  |  |
| 24 | 4.2 | Lập trình các kết nối chi tiết | 40d | 2012-11-03 | 2012-12-19 | 18 | 0d |  |  |  |
| 25 | 5 | Xây dựng test case SIT | 20d | 2012-10-31 | 2012-11-22 | 17 | 23d | 0d | Xuyen | 160h |
| 26 | 6 | Xây dựng test case UAT | 20d | 2012-11-23 | 2012-12-15 | 25 | 23d |  | Xuyen | 160h |

| ID | WBS | Task | Duration | Start | Finish | Predecessors | Total slack |
| --- | --- | --- | --- | --- | --- | --- | --- |
| 27 | 7 | **System Integration Test (SIT)** | 20d | 2012-12-20 | 2013-01-11 | 25, 24 | 0d |
| 28 | 7.1 | Kiểm thử | 20d | 2012-12-20 | 2013-01-11 |  | 20d |
| 29 | 7.2 | Fix lỗi | 20d | 2012-12-20 | 2013-01-11 |  | 0d |
| 30 | 8 | **Cài đặt máy chủ** | 60d | 2012-10-11 | 2012-12-19 |  | 61d |
| 31 | 8.1 | Chuẩn bị máy chủ | 50d | 2012-10-11 | 2012-12-07 | 13 | 61d |
| 32 | 8.2 | Cài đặt | 10d | 2012-12-08 | 2012-12-19 | 31 | 61d |
| 33 | 9 | **User Acceptance Test (UAT)** | 20d | 2013-01-12 | 2013-02-04 | 26, 29 | 0d |
| 34 | 9.1 | Kiểm thử | 20d | 2013-01-12 | 2013-02-04 |  | 0d |
| 35 | 9.2 | Fix lỗi | 20d | 2013-01-12 | 2013-02-04 |  | 0d |
| 36 | 10 | **Đào tạo, chuyển giao, pilot** | 30d | 2013-01-12 | 2013-02-15 | 27 | 11d |
| 37 | 10.1 | Đào tạo, chuyển giao | 10d | 2013-01-12 | 2013-01-23 | 27 | 31d |
| 38 | 10.2 | Pilot | 10d | 2013-02-05 | 2013-02-15 | 33 | 0d |
| 39 | 11 | Golive | 10d | 2013-02-16 | 2013-02-27 | 38 | 0d |
| 40 | 12 | Kết thúc dự án | 1d | 2013-02-28 | 2013-02-28 | 39 | 0d |
