# ESB_Plan

Schedule from MS Project, 2012-09-24 to 2013-04-15.
Seatech

## Calendars

- Standard: Mon-Fri 08:00-12:00, 13:00-17:00; Sat-Sun off.

## Resources

| Resource |
| --- |
| Phong |
| TA |
| Xuyên |
| Tuấn Anh |
| Kiên |
| Thịnh |
| Xuyen |

## Schedule

| ID | WBS | Task | Duration | Start | Finish | Predecessors | Total slack | Free slack | Constraint | Resources | Work |
| --- | --- | --- | --- | --- | --- | --- | --- | --- | --- | --- | --- |
| 1 | 1 | **Khởi động dự án** | 5d | 2012-09-24 | 2012-09-28 |  | 0d |  |  |  |  |
| 2 | 1.1 | Xây dựng kế hoạch dự án | 3d | 2012-09-24 | 2012-09-26 |  | 0d |  |  |  |  |
| 3 | 1.2 | Phê duyệt kế hoạch dự án | 2d | 2012-09-27 | 2012-09-28 | 2 | 0d |  |  |  |  |
| 4 | 2 | **Khảo sát và phân tích yêu cầu** | 25d | 2012-10-01 | 2012-11-02 | 1 | 0d |  |  | Phong; TA; Xuyên | 600h |
| 5 | 2.1 | Khảo sát và phân tích yêu cầu | 25d | 2012-10-01 | 2012-11-02 |  | 106d |  |  |  |  |
| 6 | 2.2 | Xây dựng tài liệu yêu cầu | 20d | 2012-10-01 | 2012-10-26 |  | 0d |  |  |  |  |
| 7 | 2.3 | Phê duyệt tài liệu | 5d | 2012-10-29 | 2012-11-02 | 6 | 0d |  |  |  |  |
| 8 | 3 | **Thiết kế** | 45d | 2012-10-08 | 2012-12-07 | 1 | 5d |  |  | Tuấn Anh; Kiên | 720h |
| 9 | 3.1 | Thiết kế tổng thể (kiến trúc) | 10d | 2012-10-08 | 2012-10-19 |  | 10d |  | start no earlier than 2012-10-08 |  |  |
| 10 | 3.2 | Xây dựng tài liệu thiết kế tổng thể | 10d | 2012-10-08 | 2012-10-19 |  | 10d |  | start no earlier than 2012-10-08 |  |  |
| 11 | 3.3 | Phê duyệt thiết kế tổng thể | 5d | 2012-11-05 | 2012-11-09 | 10, 7, 9 | 0d |  |  |  |  |
| 12 | 3.4 | Thiết kế chi tiết các chuẩn kết nối | 15d | 2012-10-08 | 2012-10-26 |  | 5d |  | start no earlier than 2012-10-08 |  |  |
| 13 | 3.5 | Xây dựng tài liệu tiết kế chuẩn kết nối | 15d | 2012-10-08 | 2012-10-26 |  | 5d |  | start no earlier than 2012-10-08 |  |  |
| 14 | 3.6 | Phê duyệt thiết kế các chuẩn kết nối | 5d | 2012-11-05 | 2012-11-09 | 13, 7, 12 | 0d |  |  |  |  |
| 15 | 3.7 | Thiết kế chi tiết các kết nối | 15d | 2012-11-12 | 2012-11-30 | 14, 11 | 96d |  |  |  |  |
| 16 | 3.8 | Xây dựng tài liệu thiết kế chi tiết các kết nối | 15d | 2012-11-12 | 2012-11-30 | 14, 11 | 0d |  |  |  |  |
| 17 | 3.9 | Phê duyệt thiết kế chi tiết các kết nối | 5d | 2012-12-03 | 2012-12-07 | 16 | 0d |  |  |  |  |
| 18 | 4 | **Lập trình** | 80d | 2012-11-12 | 2013-03-01 |  | 0d |  |  | Kiên; TA; Thịnh | 1920h |
| 19 | 4.1 | Lập trình các thành phần chung của các chuẩn | 10d | 2012-11-12 | 2012-11-23 | 14 | 10d |  |  |  |  |
| 20 | 4.2 | Lập trình các kết nối chi tiết | 60d | 2012-12-10 | 2013-03-01 | 19, 17 | 0d |  |  |  |  |
| 21 | 5 | Xây dựng test case SIT | 30d | 2012-12-03 | 2013-01-11 | 16 | 5d |  |  | Xuyen | 240h |
| 22 | 6 | Xây dựng test case UAT | 30d | 2013-01-14 | 2013-02-22 | 21 | 5d |  |  | Xuyen | 240h |
| 23 | 7 | **System Integration Test (SIT)** | 30d | 2013-02-04 | 2013-03-15 | 21 | 6d | 0d |  |  |  |
| 24 | 7.1 | Kiểm thử | 30d | 2013-02-04 | 2013-03-15 |  | 6d |  | start no earlier than 2013-02-04 |  |  |
| 25 | 7.2 | Fix lỗi | 30d | 2013-02-04 | 2013-03-15 |  | 6d |  | start no earlier than 2013-02-04 |  |  |

| ID | WBS | Task | Duration | Start | Finish | Predecessors | Total slack | Constraint |
| --- | --- | --- | --- | --- | --- | --- | --- | --- |
| 26 | 8 | **User Acceptance Test (UAT)** | 20d | 2013-03-04 | 2013-03-29 | 20, 22 | 0d |  |
| 27 | 8.1 | Kiểm thử | 20d | 2013-03-04 | 2013-03-29 |  | 0d |  |
| 28 | 8.2 | Fix lỗi | 20d | 2013-03-04 | 2013-03-29 |  | 0d |  |
| 29 | 9 | Đào tạo, chuyển giao, pilot | 15d | 2013-03-18 | 2013-04-05 | 23 | 6d | start no earlier than 2013-03-04 |
| 30 | 10 | Golive | 10d | 2013-04-01 | 2013-04-12 | 26 | 0d |  |
| 31 | 11 | Kết thúc dự án | 1d | 2013-04-15 | 2013-04-15 | 30 | 0d |  |
